# PPS_MKSK_CIM_NAppr_1_MKEK

How a schedule from MS Project changed from version to version. A marks actual dates.

## Version 1 (saved 2013-01-24, file PPS_MKSK_CIM_NAppr_1_MKEK.mpp)

Note of the change: Datatables, test data, docs added

| ID | WBS | Task | Duration | Start | Finish | Complete |
| --- | --- | --- | --- | --- | --- | --- |
| 1 | 1 | **CIM Project** | 82.25d | 2013-01-21 A | 2013-05-16 | 2% |
| 2 | 1.1 | **Starting of the Project** | 20h | 2013-01-21 A | 2013-01-27 | 61% |
| 3 | 1.1.1 | **Preparing the starting meeting** | 9h | 2013-01-21 A | 2013-01-24 | 76% |
| 4 |  | Notice of Meeting | 0.5h | 2013-01-21 A | 2013-01-21 A | 100% |
| 5 |  | Writing the Project Plan Document and Project Plan Schedule | 8h | 2013-01-21 A | 2013-01-24 | 65% |
| 6 |  | Making presentation | 3.5h | 2013-01-23 A | 2013-01-23 A | 100% |
| 7 |  | Project starting meeting | 1h | 2013-01-25 | 2013-01-25 |  |
| 8 |  | Writing minutes of the meeting | 1h | 2013-01-26 | 2013-01-26 |  |
| 9 |  | Kick-Off and its preparation | 1h | 2013-01-27 | 2013-01-27 |  |
| 10 | 1.2 | **System Requirements** | 40.75d | 2013-01-28 | 2013-03-25 |  |
| 11 | 1.2.1 | **Analysis of the Requirement Engineering results** | 43h | 2013-01-28 | 2013-02-11 |  |
| 12 |  | Preparation for this phase | 18h | 2013-01-21 | 2013-01-27 |  |
| 13 |  | Checking the specifications | 40h | 2013-01-28 | 2013-02-10 |  |
| 14 |  | Clearing the goals and objectives Of the system | 40h | 2013-01-28 | 2013-02-10 |  |
| 15 | 1.2.2 | **OOA of CIM** | 123h | 2013-02-11 | 2013-03-25 |  |
| 16 |  | Defining Use Cases | 25h | 2013-02-11 | 2013-02-20 |  |
| 17 |  | Specifying Data to be stored | 25h | 2013-02-11 | 2013-02-20 |  |
| 18 |  | Analyzing Use Case Implementations and their information needs | 25h | 2013-02-11 | 2013-02-20 |  |
| 19 |  | Usability Development Process | 25h | 2013-02-11 | 2013-02-20 |  |
| 20 |  | Finalizing OOA Documentation | 25h | 2013-02-11 | 2013-02-20 |  |
| 21 |  | Review of OOA | 1h | 2013-03-25 | 2013-03-25 |  |
| 22 | 1.3 | **Design and Architecture (OOD of CIM)** | 85h | 2013-03-25 | 2013-04-24 |  |
| 23 |  | User Interface Design | 21h | 2013-03-25 | 2013-04-01 |  |
| 24 |  | Planning the testing | 21h | 2013-03-25 | 2013-04-01 |  |
| 25 |  | Database Design | 21h | 2013-03-25 | 2013-04-01 |  |
| 26 |  | Application Design | 21h | 2013-03-25 | 2013-04-01 |  |
| 27 |  | Review | 1h | 2013-04-24 | 2013-04-24 |  |
| 28 | 1.4 | **Development and Coding (Prototyping Of CIM)** | 63h | 2013-04-24 | 2013-05-15 |  |
| 29 |  | Creating Database | 14h | 2013-04-24 | 2013-04-28 |  |
| 30 |  | Implementing UI | 14h | 2013-04-29 | 2013-05-04 |  |
| 31 |  | Implementing application code | 14h | 2013-05-05 | 2013-05-10 |  |
| 32 | 1.4.4 | **Testing** | 13h | 2013-05-11 | 2013-05-15 |  |
| 33 |  | Planning the testing | 6h | 2013-05-11 | 2013-05-12 |  |
| 34 |  | Testing activities | 3h | 2013-05-11 | 2013-05-12 |  |
| 35 |  | Correcting iterations | 8h | 2013-05-11 | 2013-05-13 |  |
| 36 |  | Delivery of the project | 0.75d | 2013-05-15 | 2013-05-15 |  |
| 37 |  | Overtime tasks | 100h | 2013-01-21 | 2013-02-25 |  |

## Version 2 (saved 2013-01-28, file PPS_MKSK_CIM_NAppr_2_MKEK.mpp)

Note of the change: Datatables, test data, docs added

Last finish stays 2013-05-16. Complete tasks 2 → 3.

Added:

| ID | Task | Duration | Start | Finish | Resources |
| --- | --- | --- | --- | --- | --- |
| 13 | Studying the course material in Moodle - a lot of reading | 10d | 2013-01-28 | 2013-02-10 | Alexander Strelchenko; Alexey Malkov; Elizaveta Kantina; Michal Kucera |

Changed:

| ID | Task | Start | Finish | Complete |
| --- | --- | --- | --- | --- |
| 1 | **CIM Project** |  |  | 2% → 4% |
| 2 | **Starting of the Project** |  |  | 61% → 71% |
| 7 | Project starting meeting | 2013-01-25 A |  | 0% → 20% |
| 8 | Writing minutes of the meeting | 2013-01-26 A | 2013-01-26 A | 0% → 100% |
| 9 | Kick-Off and its preparation | 2013-01-27 A |  | 0% → 25% |
| 10 | **System Requirements** |  |  | 0% → 2% |
| 11 | **Analysis of the Requirement Engineering results** |  |  | 0% → 5% |
| 12 | Preparation for this phase | 2013-01-21 A |  | 0% → 35% |

## Version 3 (saved 2013-02-04, file PPS_MKSK_CIM_NAppr_3_MKEK.mpp)

Note of the change: Datatables, test data, docs added

Last finish stays 2013-05-16. Complete tasks 3 → 2.

Added:

| ID | Task | Duration | Start | Finish | Resources |
| --- | --- | --- | --- | --- | --- |
| 38 | **Management activities** | 1d? | 2013-01-21 12:00 A | 2013-01-23 15:00 | Michal Kucera |
| 39 | Checking the Project Plan Schedule - 4.2.2013 | 0.5h | 2013-02-04 12:00 | 2013-02-04 13:30 |  |
| 40 | Creation of the WorkTracking document | 1h | 2013-02-04 12:00 | 2013-02-04 14:00 |  |

Removed: 6 Making presentation

Changed:

| ID | Task | Start | Finish | Complete | Other |
| --- | --- | --- | --- | --- | --- |
| 1 | **CIM Project** | 2013-01-21 A → 2013-01-21 12:00 A | 2013-05-16 → 2013-05-16 16:00 | 4% → 7% |  |
| 2 | **Starting of the Project** | 2013-01-21 A → 2013-01-21 12:00 A | 2013-01-27 → 2013-01-27 16:00 | 71% → 62% |  |
| 3 | **Preparing the starting meeting** | 2013-01-21 A → 2013-01-21 12:00 A | 2013-01-24 → 2013-01-24 16:00 | 76% → 67% |  |
| 4 | Notice of Meeting | 2013-01-21 A → 2013-01-21 12:00 A | 2013-01-21 A → 2013-01-21 12:30 A |  |  |
| 5 | Writing the Project Plan Document and Project Plan Schedule | 2013-01-21 A → 2013-01-21 12:00 A | 2013-01-24 → 2013-01-24 16:00 |  |  |
| 6 | Project starting meeting | 2013-01-25 A → 2013-01-25 12:00 A | 2013-01-25 → 2013-01-25 13:00 |  |  |
| 7 | Writing minutes of the meeting | 2013-01-26 A → 2013-01-26 12:00 A | 2013-01-26 A → 2013-01-26 13:00 A |  |  |
| 8 | Kick-Off and its preparation | 2013-01-27 A → 2013-01-27 12:00 A | 2013-01-27 → 2013-01-27 13:00 |  |  |
| 9 | **System Requirements** | 2013-01-28 → 2013-01-28 12:00 | 2013-03-25 → 2013-03-25 16:00 | 2% → 8% |  |
| 10 | **Analysis of the Requirement Engineering results** | 2013-01-28 → 2013-01-28 12:00 | 2013-02-11 → 2013-02-11 16:00 | 5% → 16% |  |
| 11 | Studying of the System Requirements Analysis | 2013-01-21 A → 2013-01-21 12:00 A | 2013-01-27 → 2013-01-27 14:00 |  | was named Preparation for this phase; resources Alexander Strelchenko; Alexey Malkov; Elizaveta Kantina [44%]; Michal Kucera [44%] → Alexander Strelchenko; Alexey Malkov |
| 12 | Studying the course material in Moodle | 2013-01-28 → 2013-01-28 13:00 A | 2013-02-10 → 2013-02-10 16:00 | 0% → 6% | was named Studying the course material in Moodle - a lot of reading |
| 13 | Checking the specifications | 2013-01-28 → 2013-01-28 13:00 A | 2013-02-10 → 2013-02-10 16:00 | 0% → 17% | resources none → Alexey Malkov; Elizaveta Kantina; Michal Kucera |
| 14 | Clearing the goals and objectives Of the system | 2013-01-28 → 2013-01-28 13:00 A | 2013-02-10 → 2013-02-10 16:00 | 0% → 17% | resources none → Alexey Malkov; Elizaveta Kantina; Michal Kucera |
| 15 | **OOA of CIM** | 2013-02-11 → 2013-02-11 12:00 | 2013-03-25 → 2013-03-25 16:00 |  |  |
| 16 | Defining Use Cases | 2013-02-11 → 2013-02-11 12:00 | 2013-02-20 → 2013-02-20 16:00 |  |  |
| 17 | Specifying Data to be stored | 2013-02-11 → 2013-02-11 12:00 | 2013-02-20 → 2013-02-20 16:00 |  |  |
| 18 | Analyzing Use Case Implementations and their information needs | 2013-02-11 → 2013-02-11 12:00 | 2013-02-20 → 2013-02-20 16:00 |  |  |
| 19 | Usability Development Process | 2013-02-11 → 2013-02-11 12:00 | 2013-02-20 → 2013-02-20 16:00 |  |  |
| 20 | Finalizing OOA Documentation | 2013-02-11 → 2013-02-11 12:00 | 2013-02-20 → 2013-02-20 16:00 |  |  |
| 21 | Review of OOA | 2013-03-25 → 2013-03-25 12:00 | 2013-03-25 → 2013-03-25 14:00 |  |  |
| 22 | **Design and Architecture (OOD of CIM)** | 2013-03-25 → 2013-03-25 12:00 | 2013-04-24 → 2013-04-24 16:00 |  |  |
| 23 | User Interface Design | 2013-03-25 → 2013-03-25 12:00 | 2013-04-01 → 2013-04-01 14:00 |  |  |
| 24 | Planning the testing | 2013-03-25 → 2013-03-25 12:00 | 2013-04-01 → 2013-04-01 14:00 |  |  |
| 25 | Database Design | 2013-03-25 → 2013-03-25 12:00 | 2013-04-01 → 2013-04-01 14:00 |  |  |
| 26 | Application Design | 2013-03-25 → 2013-03-25 12:00 | 2013-04-01 → 2013-04-01 14:00 |  |  |
| 27 | Review | 2013-04-24 → 2013-04-24 12:00 | 2013-04-24 → 2013-04-24 13:00 |  |  |
| 28 | **Development and Coding (Prototyping Of CIM)** | 2013-04-24 → 2013-04-24 12:00 | 2013-05-15 → 2013-05-15 16:00 |  |  |
| 29 | Creating Database | 2013-04-24 → 2013-04-24 12:00 | 2013-04-28 → 2013-04-28 12:00 |  |  |
| 30 | Implementing UI | 2013-04-29 → 2013-04-29 12:00 | 2013-05-04 → 2013-05-04 14:00 |  |  |
| 31 | Implementing application code | 2013-05-05 → 2013-05-05 12:00 | 2013-05-10 → 2013-05-10 17:00 |  |  |
| 32 | **Testing** | 2013-05-11 → 2013-05-11 12:00 | 2013-05-15 → 2013-05-15 16:00 |  |  |
| 33 | Planning the testing | 2013-05-11 → 2013-05-11 12:00 | 2013-05-12 → 2013-05-12 14:00 |  |  |
| 34 | Testing activities | 2013-05-11 → 2013-05-11 12:00 | 2013-05-12 → 2013-05-12 11:00 |  |  |
| 35 | Correcting iterations | 2013-05-11 → 2013-05-11 12:00 | 2013-05-13 → 2013-05-13 12:00 |  |  |
| 36 | Delivery of the project | 2013-05-15 → 2013-05-15 12:00 | 2013-05-15 → 2013-05-15 16:00 |  |  |
| 37 | **Overtime tasks** | 2013-01-21 → 2013-01-21 12:00 A | 2013-02-25 → 2013-02-25 12:00 |  |  |

## Version 4 (saved 2013-03-22, file PPS_MKSK_CIM_NAppr_4_MK.mpp)

Note of the change: Datatables, test data, docs added

Last finish 2013-05-16 → 2013-05-15 (-1d). Complete tasks 2 → 6.

Added:

| ID | Task | Duration | Start | Finish | Resources |
| --- | --- | --- | --- | --- | --- |
| 16 | **Analyzing Use Case Implementations and their information needs** | 89h | 2013-02-11 12:00 A | 2013-03-15 16:00 |  |
| 17 | Mock-up | 9h | 2013-02-11 12:00 A | 2013-02-15 16:00 | Alexander Strelchenko; Alexey Malkov; Elizaveta Kantina; Michal Kucera |
| 18 | Use Case diagram | 5h | 2013-02-18 12:00 A | 2013-02-20 16:00 | Alexander Strelchenko; Alexey Malkov; Elizaveta Kantina; Michal Kucera |
| 19 | Use Case Description | 23h | 2013-02-22 12:00 A | 2013-03-01 16:00 | Alexander Strelchenko; Alexey Malkov; Elizaveta Kantina; Michal Kucera |
| 20 | Class diagram | 3h | 2013-03-04 12:00 A | 2013-03-04 16:00 | Alexey Malkov |
| 21 | Class description | 7h | 2013-03-13 12:00 A | 2013-03-15 16:00 | Alexander Strelchenko; Alexey Malkov; Elizaveta Kantina; Michal Kucera |
| 22 | Sequence diagram | 20h | 2013-03-04 13:00 A | 2013-03-11 12:00 | Alexander Strelchenko; Alexey Malkov; Elizaveta Kantina; Michal Kucera |
| 24 | Evaluation of others teams work | 3h | 2013-03-21 12:00 A | 2013-03-21 16:00 | Michal Kucera |
| 25 | Creation of explanatory paragraphs in the document | 5h | 2013-03-11 13:00 A | 2013-03-13 16:00 A | Michal Kucera |
| 26 | Notice of meetings | 1h | 2013-03-15 12:00 A | 2013-03-15 13:00 A | Elizaveta Kantina |
| 27 | Writing the Project Status report | 2h | 2013-03-22 12:00 A | 2013-03-22 15:00 A | Michal Kucera |
| 28 | Review of documentation consistency with Mock-up and Usecases | 2h | 2013-03-13 12:00 A | 2013-03-13 15:00 A | Michal Kucera |
| 48 | Merging of the individual parts of Software requirements | 2h | 2013-03-16 12:00 | 2013-03-16 14:00 | Alexander Strelchenko |

Removed: 16 Defining Use Cases; 17 Specifying Data to be stored; 18 Analyzing Use Case Implementations and their information needs; 19 Usability Development Process; 38 Management activities

Changed:

| ID | Task | Start | Finish | Duration | Complete | Other |
| --- | --- | --- | --- | --- | --- | --- |
| 1 | **CIM Project** |  | 2013-05-16 16:00 → 2013-05-15 16:00 (-1d) | 82.25d → 325h | 7% → 22% |  |
| 9 | **System Requirements** |  |  |  | 8% → 24% |  |
| 10 | **Analysis of the Requirement Engineering results** |  |  |  | 16% → 15% |  |
| 11 | Studying of the System Requirements Analysis |  |  |  | 35% → 36% |  |
| 12 | Studying the course material in Moodle |  | 2013-02-10 16:00 → 2013-02-01 17:00 (-9d) | 10d → 10h | 6% → 25% |  |
| 13 | Checking the specifications |  |  |  | 17% → 8% |  |
| 14 | Clearing the goals and objectives Of the system |  |  |  | 17% → 8% |  |
| 15 | **OOA of CIM** | 2013-02-11 12:00 A |  |  | 0% → 37% |  |
| 23 | **Finalizing OOA Documentation** | 2013-02-11 12:00 → 2013-03-11 12:00 (+28d) | 2013-02-20 16:00 → 2013-03-22 16:00 (+30d) | 25h → 29h | 0% → 92% |  |
| 29 | Review of OOA | 2013-03-25 12:00 A |  |  | 0% → 25% | resources none → Alexander Strelchenko; Alexey Malkov; Elizaveta Kantina; Michal Kucera |
| 30 | **Design and Architecture (OOD of CIM)** |  | 2013-04-24 16:00 → 2013-04-18 16:00 (-6d) | 85h → 69h |  |  |
| 31 | User Interface Design |  | 2013-04-01 14:00 → 2013-03-27 15:00 (-5d) | 21h → 4h? |  |  |
| 32 | Planning the testing |  | 2013-04-01 14:00 → 2013-03-27 15:00 (-5d) | 21h → 4h? |  |  |
| 33 | Database Design |  | 2013-04-01 14:00 → 2013-03-27 15:00 (-5d) | 21h → 4h? |  |  |
| 34 | Application Design |  | 2013-04-01 14:00 → 2013-03-27 15:00 (-5d) | 21h → 4h? |  |  |
| 35 | Review | 2013-04-24 12:00 → 2013-04-17 16:00 (-7d) | 2013-04-24 13:00 → 2013-04-17 17:00 (-7d) |  |  |  |
| 36 | **Development and Coding (Prototyping Of CIM)** |  | 2013-05-15 16:00 → 2013-05-13 15:00 (-2d) | 63h → 60h |  |  |
| 37 | Creating Database |  | 2013-04-28 12:00 → 2013-04-24 17:00 (-4d) | 14h → 4h? |  |  |
| 38 | Implementing UI | 2013-04-29 12:00 → 2013-04-24 12:00 (-5d) | 2013-05-04 14:00 → 2013-04-24 17:00 (-10d) | 14h → 4h? |  |  |
| 39 | Implementing application code | 2013-05-05 12:00 → 2013-04-24 12:00 (-11d) | 2013-05-10 17:00 → 2013-04-24 17:00 (-16d) | 14h → 4h? |  |  |
| 41 | Planning the testing |  | 2013-05-12 14:00 → 2013-05-12 12:00 | 6h → 4h? |  |  |
| 42 | Testing activities |  | 2013-05-12 11:00 → 2013-05-12 12:00 | 3h → 4h? |  |  |
| 43 | Correcting iterations |  | 2013-05-13 12:00 → 2013-05-12 12:00 (-1d) | 8h → 4h? |  |  |
| 45 | **Overtime tasks** | 2013-01-21 12:00 A → 2013-01-21 12:00 |  |  |  |  |
| 46 | Checking the Project Plan Schedule | 2013-02-04 12:00 → 2013-02-04 13:00 |  |  |  | was named Checking the Project Plan Schedule - 4.2.2013; resources none → Michal Kucera |
| 47 | Creation of the WorkTracking document | 2013-02-04 12:00 → 2013-02-04 13:00 |  |  |  | resources none → Michal Kucera |
